# 旅游平台WBS

Schedule from MS Project, 2019-03-29 to 2019-06-27, costs in ¥, A marks actual dates.

## Calendars

- 标准: Mon-Fri 08:00-12:00, 13:00-17:00; Sat-Sun off.

## Resources

| Resource | Rate | Cost per use |
| --- | --- | --- |
| UI设计师 | 50 |  |
| 产品经理 | 50 |  |
| 开发工程师1 | 62.5 |  |
| 测试工程师1 | 62.5 |  |
| 项目经理 | 75 |  |
| 需求专家 | 100 |  |
| 架构师 | 100 |  |
| 质量专家 | 100 |  |
| 测试工程师2 | 62.5 |  |
| 开发工程师2 | 62.5 |  |
| 开发工程师3 | 62.5 |  |
| 团队建设费 |  |  |
| 测试货物 | -20 | 1000 |
| 其他间接成本 |  |  |
| 储备 |  |  |

## Schedule

| ID | WBS | Task | Duration | Start | Finish | Predecessors | Complete | Remaining | Total slack | Free slack | Constraint | Resources | Work | Actual work | Cost | Actual cost |
| --- | --- | --- | --- | --- | --- | --- | --- | --- | --- | --- | --- | --- | --- | --- | --- | --- |
| 1 | 1 | **启动** | 7d | 2019-03-29 A | 2019-04-08 |  | 25% | 5.25d |  |  |  |  | 120h | 66h | 8,700 | 4,725 |
| 2 | 1.1 | 任命项目经理 | 1d | 2019-03-29 A | 2019-03-29 A |  | 100% |  |  |  | start no earlier than 2019-03-29 |  |  |  |  |  |
| 3 | 1.2 | 组建核心团队 | 1d | 2019-04-01 A | 2019-04-01 |  | 75% | 0.25d | 3d |  | start no earlier than 2019-04-01 | UI设计师; 产品经理; 开发工程师1; 测试工程师1; 项目经理; 需求专家; 架构师; 质量专家; 开发工程师3; 开发工程师2; 测试工程师2 | 88h | 66h | 6,300 | 4,725 |
| 4 | 1.3 | 制定时间计划及里程碑 | 1d | 2019-04-02 | 2019-04-02 |  |  |  | 2d |  | start no earlier than 2019-04-02 | 项目经理 | 8h |  | 600 |  |
| 5 | 1.4 | 分析干系人 | 2d | 2019-04-03 | 2019-04-04 |  |  |  | 0d |  | start no earlier than 2019-04-03 | 项目经理 | 16h |  | 1,200 |  |
| 6 | 1.5 | 制定项目章程 | 1d? | 2019-04-05 | 2019-04-05 | 2, 3, 4, 5 |  |  | 0d |  |  | 项目经理 | 8h |  | 600 |  |
| 7 | 1.6 | 项目启动大会 | 1d | 2019-04-08 | 2019-04-08 | 6 |  |  | 0d |  |  |  |  |  |  |  |
| 8 | 2 | **规划** | 45d | 2019-04-09 A | 2019-06-10 |  | 5% | 42.79d |  |  |  |  | 560h | 44.8h | 42,600 | 3,360 |
| 9 | 2.1 | **规划范围** | 16d | 2019-04-09 A | 2019-04-30 |  | 12% | 14.13d | 2d |  |  |  | 296h | 44.8h | 21,200 | 3,360 |
| 10 | 2.1.1 | 制定需求说明书 | 8d | 2019-04-09 A | 2019-04-18 | 7 | 35% | 5.2d | 2d | 0d |  | 需求专家; 产品经理 | 128h | 44.8h | 9,600 | 3,360 |
| 11 | 2.1.2 | 界面设计 | 5d | 2019-04-19 | 2019-04-25 | 10 |  |  | 2d | 0d |  | UI设计师 | 40h |  | 2,000 |  |
| 12 | 2.1.3 | 详细设计说明书 | 5d | 2019-04-19 | 2019-04-25 | 10 |  |  | 2d | 0d |  | 产品经理; 架构师 | 80h |  | 6,000 |  |
| 13 | 2.1.4 | 范围说明书 | 3d | 2019-04-19 | 2019-04-23 | 10 |  |  | 3d | 2d |  | 项目经理 | 24h |  | 1,800 |  |
| 14 | 2.1.5 | 创建WBS | 2d | 2019-04-26 | 2019-04-29 | 11, 12, 13 |  |  | 1d | 0d |  | 项目经理 | 16h |  | 1,200 |  |
| 15 | 2.1.6 | 形成范围基准 | 1d | 2019-04-30 | 2019-04-30 | 14 |  |  | 1d | 0d |  | 项目经理 | 8h |  | 600 |  |
| 16 | 2.2 | **规划时间** | 8d | 2019-05-01 | 2019-05-10 |  |  |  |  |  |  |  | 48h |  | 3,600 |  |
| 17 | 2.2.1 | 排列工作包顺序 | 1d | 2019-05-01 | 2019-05-01 | 15 |  |  | 1d | 0d |  | 项目经理 | 8h |  | 600 |  |
| 18 | 2.2.2 | 估算资源 | 2d | 2019-05-02 | 2019-05-03 | 17 |  |  | 1d | 0d |  | 项目经理 | 16h |  | 1,200 |  |
| 19 | 2.2.3 | 估算持续时间 | 2d | 2019-05-07 | 2019-05-08 | 18 |  |  | 1d | 0d | start no earlier than 2019-05-07 | 项目经理 | 16h |  | 1,200 |  |
| 20 | 2.2.4 | 制定进度计划 | 1d | 2019-05-09 | 2019-05-09 | 19 |  |  | 1d | 0d | start no earlier than 2019-05-09 | 项目经理 | 8h |  | 600 |  |
| 21 | 2.3 | **规划成本** | 6d | 2019-05-10 | 2019-05-17 |  |  |  |  |  |  |  | 40h |  | 3,000 |  |
| 22 | 2.3.1 | 项目成本估算 | 3d | 2019-05-10 | 2019-05-14 | 20 |  |  | 1d | 0d |  | 项目经理 | 24h |  | 1,800 |  |
| 23 | 2.3.2 | 项目预算 | 2d | 2019-05-15 | 2019-05-16 | 22 |  |  | 1d |  |  | 项目经理 | 16h |  | 1,200 |  |
| 24 | 2.4 | **规划质量** | 8d | 2019-05-01 | 2019-05-10 |  |  |  | 17d | 14d |  |  | 64h |  | 6,400 |  |
| 25 | 2.4.1 | 制定测试计划 | 2d | 2019-05-01 | 2019-05-02 | 15 |  |  | 17d | 0d |  | 质量专家 | 16h |  | 1,600 |  |
| 26 | 2.4.2 | 制定测试用例 | 6d | 2019-05-03 | 2019-05-10 | 25 |  |  | 17d |  |  | 质量专家 | 48h |  | 4,800 |  |

| ID | WBS | Task | Duration | Start | Finish | Predecessors | Complete | Remaining | Total slack | Free slack | Constraint | Resources | Work | Actual work | Cost | Actual cost |
| --- | --- | --- | --- | --- | --- | --- | --- | --- | --- | --- | --- | --- | --- | --- | --- | --- |
| 27 | 2.5 | **规划人力资源** | 4d | 2019-05-17 | 2019-05-22 |  |  |  |  |  |  |  | 32h |  | 2,400 |  |
| 28 | 2.5.1 | 制定人力资源计划 | 2d | 2019-05-17 | 2019-05-20 | 18 |  |  | 0d |  | start no earlier than 2019-05-17 | 项目经理 | 16h |  | 1,200 |  |
| 29 | 2.5.2 | 制定人员配备管理计划 | 2d | 2019-05-21 | 2019-05-22 | 28 |  |  | 0d |  |  | 项目经理 | 16h |  | 1,200 |  |
| 30 | 2.6 | **规划沟通** | 2d | 2019-05-23 | 2019-05-24 |  |  |  | 7d | 4d |  |  | 16h |  | 1,200 |  |
| 31 | 2.6.1 | 制定沟通管理计划 | 2d | 2019-05-23 | 2019-05-24 | 29 |  |  | 7d |  |  | 项目经理 | 16h |  | 1,200 |  |
| 32 | 2.7 | **规划采购** | 4d | 2019-05-27 | 2019-05-30 |  |  |  | 3d | 0d |  |  | 32h |  | 2,400 |  |
| 33 | 2.7.1 | 自制外购分析 | 1d | 2019-05-27 | 2019-05-27 | 18 |  |  | 3d | 0d | start no earlier than 2019-05-27 | 项目经理 | 8h |  | 600 |  |
| 34 | 2.7.2 | 制定采购计划 | 3d | 2019-05-28 | 2019-05-30 | 33 |  |  | 3d |  |  | 项目经理 | 24h |  | 1,800 |  |
| 35 | 2.8 | **规划风险** | 3d | 2019-05-31 | 2019-06-04 |  |  |  | 3d |  |  |  | 24h |  | 1,800 |  |
| 36 | 2.8.1 | 识别风险 | 1d | 2019-05-31 | 2019-05-31 | 16, 21, 24, 27, 30, 32 |  |  | 3d | 0d |  | 项目经理 | 8h |  | 600 |  |
| 37 | 2.8.2 | 风险分析 | 1d | 2019-06-03 | 2019-06-03 | 36 |  |  | 3d | 0d |  | 项目经理 | 8h |  | 600 |  |
| 38 | 2.8.3 | 制定风险登记册 | 1d | 2019-06-04 | 2019-06-04 | 37 |  |  | 3d | 0d |  | 项目经理 | 8h |  | 600 |  |
| 39 | 2.9 | 规划整合 | 1d | 2019-06-05 | 2019-06-05 | 38 |  |  | 3d |  |  | 项目经理 | 8h |  | 600 |  |
| 40 | 3 | **执行与监控** | 35d | 2019-05-06 A | 2019-06-21 |  | 9% | 31.97d | 4d |  |  |  | 704h | 198h | 50,200 | 14,175 |
| 41 | 3.1 | 组建项目团队 | 1d | 2019-05-06 | 2019-05-06 | 18 |  |  | 3d | 0d | start no earlier than 2019-05-06 | 测试工程师1; 开发工程师1; 项目经理; 测试工程师2; 开发工程师2; 开发工程师3 | 48h |  | 3,100 |  |
| 42 | 3.2 | **项目执行** | 10d | 2019-05-06 | 2019-05-17 |  |  |  |  |  |  |  | 104h |  | 6,500 |  |
| 43 | 3.2.1 | **游客模块** | 10d | 2019-05-06 | 2019-05-17 |  |  |  |  |  |  |  | 48h |  | 3,000 |  |
| 44 | 3.2.1.1 | 登录注册 | 1d | 2019-05-07 | 2019-05-07 | 41 |  |  | 3d | 0d |  | 开发工程师1 | 8h |  | 500 |  |
| 45 | 3.2.1.2 | 发布期望导游信息 | 1d | 2019-05-08 | 2019-05-08 | 44 |  |  | 3d | 0d |  | 开发工程师1 | 8h |  | 500 |  |
| 46 | 3.2.1.3 | 搜索导游信息 | 1d | 2019-05-09 | 2019-05-09 | 45 |  |  | 3d | 0d |  | 开发工程师1 | 8h |  | 500 |  |
| 47 | 3.2.1.4 | 评价反馈 | 1d | 2019-05-10 | 2019-05-10 | 46 |  |  | 3d | 0d |  | 开发工程师1 | 8h |  | 500 |  |
| 48 | 3.2.1.5 | 个人信息页面 | 1d | 2019-05-13 | 2019-05-13 | 47 |  |  | 3d | 0d |  | 开发工程师1 | 8h |  | 500 |  |
| 49 | 3.2.1.6 | 支付定金 | 1d | 2019-05-14 | 2019-05-14 | 48 |  |  | 3d |  |  | 开发工程师1 | 8h |  | 500 |  |
| 50 | 3.2.2 | **导游模块** | 4d | 2019-05-07 | 2019-05-10 |  |  |  | 5d |  |  |  | 32h |  | 2,000 |  |
| 51 | 3.2.2.1 | 导游认证 | 1d | 2019-05-07 | 2019-05-07 | 41 |  |  | 5d | 0d |  | 开发工程师2 | 8h |  | 500 |  |
| 52 | 3.2.2.2 | 发布旅游解说信息 | 1d | 2019-05-08 | 2019-05-08 | 51 |  |  | 5d | 0d |  | 开发工程师2 | 8h |  | 500 |  |
| 53 | 3.2.2.3 | 导游信息页面 | 1d | 2019-05-09 | 2019-05-09 | 52 |  |  | 5d | 0d |  | 开发工程师2 | 8h |  | 500 |  |
| 54 | 3.2.2.4 | 领取工资 | 1d | 2019-05-10 | 2019-05-10 | 53 |  |  | 5d |  |  | 开发工程师2 | 8h |  | 500 |  |

| ID | WBS | Task | Duration | Start | Finish | Predecessors | Complete | Remaining | Total slack | Free slack | Constraint | Resources | Work | Actual work | Cost | Actual cost |
| --- | --- | --- | --- | --- | --- | --- | --- | --- | --- | --- | --- | --- | --- | --- | --- | --- |
| 55 | 3.2.3 | **管理员模块** | 3d | 2019-05-07 | 2019-05-09 |  |  |  | 6d |  |  |  | 24h |  | 1,500 |  |
| 56 | 3.2.3.1 | 导游审核 | 1d | 2019-05-07 | 2019-05-07 | 41 |  |  | 6d | 0d |  | 开发工程师3 | 8h |  | 500 |  |
| 57 | 3.2.3.2 | 流量统计 | 1d | 2019-05-08 | 2019-05-08 | 56 |  |  | 6d | 0d |  | 开发工程师3 | 8h |  | 500 |  |
| 58 | 3.2.3.3 | 数据备份 | 1d | 2019-05-09 | 2019-05-09 | 57 |  |  | 6d |  |  | 开发工程师3 | 8h |  | 500 |  |
| 59 | 3.3 | **项目监控** | 4d | 2019-06-06 | 2019-06-11 |  |  |  | 12d |  |  |  | 208h |  | 15,500 |  |
| 60 | 3.3.1 | 各项指标监控 | 1d | 2019-06-06 | 2019-06-06 | 41 |  |  | 13d | 0d | start no earlier than 2019-06-06 | 测试工程师1; 测试工程师2; 项目经理 | 24h |  | 1,600 |  |
| 61 | 3.3.2 | 监控评审 | 1d | 2019-06-07 | 2019-06-07 | 60 |  |  | 13d | 0d |  | UI设计师; 产品经理; 架构师; 项目经理; 需求专家; 质量专家 | 48h |  | 3,800 |  |
| 62 | 3.3.3 | 变更评审 | 1d | 2019-06-10 | 2019-06-10 | 61 |  |  | 13d |  |  | UI设计师; 产品经理; 架构师; 项目经理; 需求专家; 质量专家 | 48h |  | 3,800 |  |
| 63 | 3.3.4 | 例会 | 1d | 2019-06-11 | 2019-06-11 | 41 |  |  | 12d |  | start no earlier than 2019-06-11 | UI设计师; 测试工程师1; 测试工程师2; 产品经理; 架构师; 开发工程师1; 开发工程师2; 开发工程师3; 项目经理; 需求专家; 质量专家 | 88h |  | 6,300 |  |
| 64 | 3.4 | **管理干系人** | 3d | 2019-06-12 | 2019-06-14 |  |  |  | 9d |  |  |  | 24h |  | 1,800 |  |
| 65 | 3.4.1 | 发布项目信息 | 1d | 2019-06-12 | 2019-06-12 | 41 |  |  | 11d |  | start no earlier than 2019-06-12 | 项目经理 | 8h |  | 600 |  |
| 66 | 3.4.2 | 报告监控指标 | 1d | 2019-06-13 | 2019-06-13 | 41 |  |  | 10d |  | start no earlier than 2019-06-13 | 项目经理 | 8h |  | 600 |  |
| 67 | 3.4.3 | 干系人沟通 | 1d | 2019-06-14 | 2019-06-14 | 41 |  |  | 9d |  | start no earlier than 2019-06-14 | 项目经理 | 8h |  | 600 |  |
| 68 | 3.5 | **团队建设** | 3d | 2019-06-17 A | 2019-06-19 |  | 75% | 0.75d |  |  |  |  | 264h | 198h | 18,900 | 14,175 |
| 69 | 3.5.1 | 培训 | 1d | 2019-06-17 A | 2019-06-17 A | 41 | 100% |  |  |  |  | UI设计师; 测试工程师1; 测试工程师2; 产品经理; 架构师; 开发工程师1; 开发工程师2; 开发工程师3; 项目经理; 需求专家; 质量专家 | 88h | 88h | 6,300 | 6,300 |
| 70 | 3.5.2 | 娱乐活动 | 1d | 2019-06-18 A | 2019-06-18 A | 41 | 100% |  |  |  | start no earlier than 2019-06-18 | UI设计师; 测试工程师1; 测试工程师2; 产品经理; 架构师; 开发工程师1; 开发工程师2; 开发工程师3; 项目经理; 需求专家; 质量专家 | 88h | 88h | 6,300 | 6,300 |
| 71 | 3.5.3 | 沟通 | 1d | 2019-06-19 A | 2019-06-19 | 70 | 25% | 0.75d | 0d |  |  | UI设计师; 测试工程师1; 测试工程师2; 产品经理; 架构师; 开发工程师1; 开发工程师2; 开发工程师3; 项目经理; 需求专家; 质量专家 | 88h | 22h | 6,300 | 1,575 |
| 72 | 3.6 | 采购 | 1d | 2019-06-20 | 2019-06-20 |  |  |  | 5d |  | start no earlier than 2019-06-20 | 项目经理 | 8h |  | 600 |  |
| 73 | 3.7 | 项目验收 | 1d | 2019-06-21 | 2019-06-21 | 42 |  |  | 3d | 0d | start no earlier than 2019-06-21 | UI设计师; 产品经理; 架构师; 项目经理; 需求专家; 质量专家 | 48h |  | 3,800 |  |
| 74 | 4 | **收尾** | 4d | 2019-06-24 | 2019-06-27 |  |  |  |  |  |  |  | 144h |  | 10,700 |  |
| 75 | 4.1 | 项目终验 | 1d | 2019-06-24 | 2019-06-24 | 73 |  |  | 3d |  |  | UI设计师; 产品经理; 架构师; 项目经理; 需求专家; 质量专家 | 48h |  | 3,800 |  |
| 76 | 4.2 | 结束采购 | 1d | 2019-06-25 | 2019-06-25 | 73 |  |  | 2d |  | start no earlier than 2019-06-25 | 项目经理 | 8h |  | 600 |  |
| 77 | 4.3 | 项目内部收尾 | 1d | 2019-06-26 | 2019-06-26 | 73 |  |  | 1d |  | start no earlier than 2019-06-26 | UI设计师; 测试工程师1; 测试工程师2; 产品经理; 架构师; 开发工程师1; 开发工程师2; 开发工程师3; 项目经理; 需求专家; 质量专家 | 88h |  | 6,300 |  |
